Schedule from MS Project, 2026-03-11 to 2026-08-31, costs in ₽.

## Calendars

- Standard: Mon-Fri 08:00-12:00, 13:00-17:00; Sat-Sun off. Exceptions (off unless hours are given): 2026-05-01 (1 мая), 2026-05-11 (День победы), 2026-05-20 to 2026-06-11 (Летняя Сессия), 2026-06-12 (День России).

## Resources

| Resource | Rate |
| --- | --- |
| Роман | 650 |
| Марина | 650 |
| Дмитрий | 650 |
| Данил | 650 |
| * | 2600 |

## Schedule

| ID | WBS | Task | Type | Duration | Start | Finish | Predecessors | Resources | Work | Cost |
| --- | --- | --- | --- | --- | --- | --- | --- | --- | --- | --- |
| 1 | 1 | **Проект** |  | 104d | 2026-03-11 | 2026-08-31 |  |  | 1088h | 1,050,400 |
| 2 | 1.1 | **Концептуальный дизайн** |  | 16d | 2026-03-11 | 2026-04-01 |  |  | 416h | 613,600 |
| 3 | 1.1.1 | Анализ ТЗ | manual | 1.2w | 2026-03-11 | 2026-03-18 |  | * | 48h | 124,800 |
| 4 | 1.1.2 | Выбор полетного задания | manual | 1w | 2026-03-19 | 2026-03-25 | 3 | * | 40h | 104,000 |
| 5 | 1.1.3 | Выбор/обоснование аэродинамической схемы | manual | 1w | 2026-03-19 | 2026-03-25 | 3 | Данил | 40h | 26,000 |
| 6 | 1.1.4 | Выбор бортового оборудования | manual | 1w | 2026-03-26 | 2026-04-01 | 4 | Марина; Дмитрий; Роман | 120h | 78,000 |
| 7 | 1.1.5 | Выбор ПО | manual | 1w | 2026-03-26 | 2026-04-01 | 4 | Марина | 40h | 26,000 |
| 8 | 1.1.6 | Эскиз (3D модель) | manual | 1w | 2026-03-26 | 2026-04-01 | 5 | Данил | 40h | 26,000 |
| 9 | 1.1.7 | Описание методологии проектирования | manual | 2.2w | 2026-03-18 | 2026-04-01 |  | * | 88h | 228,800 |
| 10 | 1.1.8 | Сделать общее фото) | milestone, manual | 0d | 2026-04-01 | 2026-04-01 |  | * |  |  |
| 11 | 1.2 | **Проектный дизайн** |  | 34d | 2026-03-25 | 2026-05-13 |  |  | 672h | 436,800 |
| 12 | 1.2.1 | **Аэродинамика** |  | 2w | 2026-03-26 | 2026-04-08 |  |  | 320h | 208,000 |
| 13 | 1.2.1.1 | Выбор аэрод-х профилей | manual | 2w | 2026-03-26 | 2026-04-08 | 5 | Данил | 80h | 52,000 |
| 14 | 1.2.1.2 | Геометрические хара-ки | manual | 2w | 2026-03-26 | 2026-04-08 | 5 | Данил | 80h | 52,000 |
| 15 | 1.2.1.3 | Аэродина-е коэфф. | manual | 2w | 2026-03-26 | 2026-04-08 | 5 | Данил | 80h | 52,000 |
| 16 | 1.2.1.4 | Динамическая и статическая устойчивости | manual | 2w | 2026-03-26 | 2026-04-08 | 5 | Данил | 80h | 52,000 |
| 17 | 1.2.2 | **Силовая установка** |  | 2.5w | 2026-04-09 | 2026-04-25 | 12 |  |  |  |
| 18 | 1.2.2.1 | Расчет энергопотребления | manual | 2d | 2026-04-09 | 2026-04-10 | 4 |  |  |  |
| 19 | 1.2.2.2 | Выбор мотора и винта | manual | 7d | 2026-04-13 | 2026-04-21 | 18 |  |  |  |
| 20 | 1.2.2.3 | Оценка потребной и располагаемой тяг | manual | 3d | 2026-04-22 | 2026-04-24 | 19, 12 |  |  |  |
| 21 | 1.2.3 | **Бортовое оборудование** |  | 15d | 2026-04-02 | 2026-04-22 |  |  | 112h | 72,800 |
| 22 | 1.2.3.1 | Сруктурно-функциональная и схема подключения | manual | 5d | 2026-04-02 | 2026-04-08 | 6 | Марина | 40h | 26,000 |
| 23 | 1.2.3.2 | Исследовать возможности автопилота | manual | 3w | 2026-04-02 | 2026-04-22 | 6 |  |  |  |
| 24 | 1.2.3.3 | LUA scripts. Получение навигационных параметров | manual | 3d | 2026-04-09 | 2026-04-13 | 22 | Марина | 24h | 15,600 |
| 25 | 1.2.3.4 | LUA scripts. Обработка данных по UART | manual | 3d | 2026-04-14 | 2026-04-16 | 6, 24 | Марина | 24h | 15,600 |
| 26 | 1.2.3.5 | Расчет энергопотребления | manual | 3d | 2026-04-17 | 2026-04-21 | 22 | Марина | 24h | 15,600 |

| ID | WBS | Task | Type | Duration | Start | Finish | Predecessors | Resources | Work | Cost |
| --- | --- | --- | --- | --- | --- | --- | --- | --- | --- | --- |
| 27 | 1.2.4 | **Технология производства** |  | 23d | 2026-04-01 | 2026-05-04 |  |  |  |  |
| 28 | 1.2.4.1 | Выбор материалов конструкции | manual | 5d | 2026-04-01 | 2026-04-07 | 4, 5 |  |  |  |
| 29 | 1.2.4.2 | Определить набор типовых элементов | manual | 7d | 2026-04-08 | 2026-04-16 | 28 |  |  |  |
| 30 | 1.2.4.3 | Подготовить композитную матрицу | manual | 7d | 2026-04-23 | 2026-05-04 | 29, 12, 40 |  |  |  |
| 31 | 1.2.5 | **Прочностные расчеты** |  | 12d | 2026-04-25 | 2026-05-13 |  |  |  |  |
| 32 | 1.2.5.1 | Оценка эксплуатационных и предельных перегрузок | manual | 3d | 2026-04-22 | 2026-04-24 | 4, 19 |  |  |  |
| 33 | 1.2.5.2 | V-n диаграмма | manual | 6d | 2026-04-29 | 2026-05-07 | 32 |  |  |  |
| 34 | 1.2.5.3 | Центровочная ведомость | manual | 6d | 2026-05-05 | 2026-05-13 | 17, 27 |  |  |  |
| 35 | 1.2.6 | **Компьютерное зрение** |  | 5w | 2026-03-25 | 2026-04-28 |  |  | 240h | 156,000 |
| 36 | 1.2.6.1 | Создать базу сжатых изображений символов | manual | 5d | 2026-03-25 | 2026-03-31 |  | Роман | 40h | 26,000 |
| 37 | 1.2.6.2 | Работа с записью данных на SD | manual | 5d | 2026-03-30 | 2026-04-03 |  | Роман | 40h | 26,000 |
| 38 | 1.2.6.3 | Алгоритмы анализа и обработки изображений | manual | 3w | 2026-03-25 | 2026-04-14 |  | Роман | 120h | 78,000 |
| 39 | 1.2.6.4 | Прием и обработка данных по UART | manual | 5d | 2026-04-15 | 2026-04-21 |  | Роман | 40h | 26,000 |
| 40 | 1.2.7 | Детализированная 3D модель | manual | 21d | 2026-03-25 | 2026-04-22 |  |  |  |  |
| 41 | 1.3 | **Производство** |  | 23d | 2026-05-15 | 2026-07-10 |  |  |  |  |
| 42 | 1.3.1 | Изготовление фюзеляжа | manual | 3w | 2026-05-15 | 2026-06-30 | 12, 27, 40 |  |  |  |
| 43 | 1.3.2 | Резка крыла | manual | 2w | 2026-05-05 | 2026-05-19 | 12, 27 |  |  |  |
| 44 | 1.3.3 | Изготовление хвостового оперения | manual | 2w | 2026-05-15 | 2026-06-23 | 12, 27 |  |  |  |
| 45 | 1.3.4 | Макетирования работы бортового оборудования | manual | 2w | 2026-04-22 | 2026-05-06 | 21, 35 |  |  |  |
| 46 | 1.3.5 | Проектирование транспортировочной коробки | manual | 1w | 2026-07-01 | 2026-07-07 | 40, 42, 43 |  |  |  |
| 47 | 1.3.6 | Натурные испытания на прочность элементов конструкции | manual | 15d | 2026-06-15 | 2026-07-03 | 30, 32 |  |  |  |
| 48 | 1.4 | Испытания | milestone, manual | 0d | 2026-07-15 | 2026-07-15 |  |  |  |  |
